# Project Plan

Schedule from MS Project, 2021-09-27 to 2022-01-20, status date 2019-02-18.

## Calendars

- Standard: Mon-Fri 08:00-12:00, 13:00-17:00; Sat-Sun off.

## Resources

| Resource |
| --- |
| PM1 |
| PM2 |
| RE1 |
| RE2 |
| RE3 |
| RE7 |
| RE8 |
| RE10 |
| RE9 |
| RE15 |
| PM3 |
| RE13 |
| RE14 |
| PE25 |
| SE13 |
| TE49 |
| SE14 |
| SE15 |
| SE16 |
| SE9 |
| SE11 |
| SE12 |
| PE4 |
| PE5 |
| PE7 |
| PE8 |
| PE12 |
| PE13 |
| PE22 |
| PE23 |
| PE24 |
| TE1 |
| TE2 |
| TE3 |
| TE7 |
| TE8 |
| TE44 |
| TE45 |
| TE46 |
| DE1 |
| DE2 |
| DE7 |
| DE8 |
| DE13 |
| DE14 |
| DE43 |
| DE44 |
| DE45 |
| TE47 |
| TE48 |
| PE26 |
| PE27 |
| PE28 |
| PE29 |
| PM4 |
| PM5 |
| RE32 |
| RE28 |
| RE29 |
| RE33 |
| SE30 |
| SE31 |
| SE32 |
| SE35 |
| PE58 |
| PE59 |
| PE65 |
| TE71 |
| TE72 |
| TE73 |
| DE81 |
| DE82 |
| DE84 |
| DE85 |

## Schedule

| ID | WBS | Task | Type | Duration | Start | Finish | Predecessors | Total slack | Free slack | Constraint | Resources | Work |
| --- | --- | --- | --- | --- | --- | --- | --- | --- | --- | --- | --- | --- |
| 1 | 1 | **Project 1** |  | 83.94d | 2021-09-27 | 2022-01-20 |  | 0d |  |  |  | 2798.16h |
| 2 | 1.1 | **Project Plan** |  | 6.53d | 2021-09-27 | 2021-10-05 |  | 0d |  |  |  | 71.44h |
| 3 | 1.1.1 | Write Plan |  | 5.19d | 2021-09-27 | 2021-10-04 |  | 0d |  | start no earlier than 2021-09-27 | PM1 | 41.52h |
| 4 | 1.1.2 | **Review Plan** |  | 0.73d | 2021-10-04 | 2021-10-04 |  | 0d |  |  |  | 25.04h |
| 5 | 1.1.2.1 | Prepration Review |  | 0.52d | 2021-10-04 | 2021-10-04 | 3 | 0d |  |  | PE4; RE1; PE25; TE1 | 16.64h |
| 6 | 1.1.2.2 | Review Meeting |  | 0.21d | 2021-10-04 | 2021-10-04 | 5 | 0d |  |  | PE4; PE25; RE1; TE1; PM1 | 8.4h |
| 7 | 1.1.3 | Rework |  | 0.61d | 2021-10-04 | 2021-10-05 | 6 | 0d |  |  | PM1 | 4.88h |
| 8 | 1.2 | **Risk Mitigation and Contingency Plan** |  | 11.92d | 2021-10-07 | 2021-10-25 |  | 0d |  |  |  | 29.04h |
| 9 | 1.2.1 | Write Plan | manual | 0.28d | 2021-10-07 | 2021-10-08 | 2 |  |  |  | DE45; PE29; RE15; SE16; TE49 | 11.2h |
| 10 | 1.2.2 | **Review Plan** |  | 0.61d | 2021-10-11 | 2021-10-11 |  | 0d |  |  |  | 6.8h |
| 11 | 1.2.2.1 | Preparation for review | manual | 0.11d | 2021-10-11 | 2021-10-11 | 9 |  |  |  | DE45; PE29; RE15; SE16; TE49 | 4.4h |
| 12 | 1.2.2.2 | Review Meeting | manual | 0.06d | 2021-10-11 | 2021-10-11 | 11 |  |  |  | DE45; PE29; RE15; SE16; TE49 | 2.4h |
| 13 | 1.2.3 | Rework | manual | 8.54d | 2021-10-13 | 2021-10-25 | 12 |  |  |  | DE45; PE29; RE15; SE16; TE49; PM3 | 11.04h |
| 14 | 1.3 | **Requirement** |  | 16.65d | 2021-10-05 | 2021-10-28 |  | 0d |  |  |  | 516.24h |
| 15 | 1.3.1 | Write Requirement |  | 1.83d | 2021-10-05 | 2021-10-07 | 7 | 0d |  |  | RE1; RE2; RE3; RE10 | 58.56h |
| 16 | 1.3.2 | Write use case Model |  | 12.25d | 2021-10-07 | 2021-10-25 | 15 | 0d |  |  | RE14; RE13; PM3; RE7 | 392h |
| 17 | 1.3.3 | **Review Requirements/ Use Case Model** |  | 13.11d | 2021-10-07 | 2021-10-26 |  | 12.25d |  |  |  | 38.32h |
| 18 | 1.3.3.1 | prepration for review(req) |  | 0.15d | 2021-10-07 | 2021-10-07 | 15 | 75.33d | 0d |  | DE1; PE4; SE13; TE2 | 4.8h |
| 19 | 1.3.3.2 | prepration for review(use case) |  | 0.61d | 2021-10-25 | 2021-10-26 | 16 | 0d |  |  | DE1; PE4; SE13; TE2 | 19.52h |
| 20 | 1.3.3.3 | Review Meeting(req) |  | 0.1d | 2021-10-07 | 2021-10-07 | 18 | 75.33d |  |  | DE1; RE1; PE4; SE13; TE2 | 4h |
| 21 | 1.3.3.4 | Review Meeting(use case) |  | 0.25d | 2021-10-26 | 2021-10-26 | 19 | 0d |  |  | DE1; RE1; SE13; PE4; TE2 | 10h |
| 22 | 1.3.4 | Rework |  | 1.71d | 2021-10-26 | 2021-10-28 | 21 | 0d |  |  | RE1; RE7 | 27.36h |
| 23 | 1.4 | **Analysis** |  | 3.23d | 2021-10-28 | 2021-11-02 |  | 0d |  |  |  | 72.32h |
| 24 | 1.4.1 | Write Analysis Document |  | 1.61d | 2021-10-28 | 2021-10-29 | 22 | 0d |  |  | PE25; TE49 | 25.76h |

| ID | WBS | Task | Duration | Start | Finish | Predecessors | Total slack | Resources | Work |
| --- | --- | --- | --- | --- | --- | --- | --- | --- | --- |
| 25 | 1.4.2 | **Review Analysis Document** | 1.13d | 2021-10-29 | 2021-11-01 |  | 0d |  | 38.72h |
| 26 | 1.4.2.1 | Prepration for Analysis Document | 0.81d | 2021-10-29 | 2021-11-01 | 24 | 0d | DE7; PE4; RE2; TE1 | 25.92h |
| 27 | 1.4.2.2 | Review Meeting | 0.32d | 2021-11-01 | 2021-11-01 | 26 | 0d | TE1; DE7; PE4; RE2; TE49 | 12.8h |
| 28 | 1.4.3 | Rework | 0.49d | 2021-11-01 | 2021-11-02 | 27 | 0d | PE25; TE49 | 7.84h |
| 29 | 1.5 | **Design** | 20.5d | 2021-11-02 | 2021-11-30 |  | 0d |  | 511.84h |
| 30 | 1.5.1 | Write DD | 4.52d | 2021-11-02 | 2021-11-08 | 28 | 0d | TE49; SE13; SE16 | 108.48h |
| 31 | 1.5.2 | **Review DD** | 2.04d | 2021-11-08 | 2021-11-10 |  | 0d |  | 70.72h |
| 32 | 1.5.2.1 | Prepration for DD | 1.36d | 2021-11-08 | 2021-11-10 | 30 | 0d | TE45; DE8; PE12; RE9 | 43.52h |
| 33 | 1.5.2.2 | Review Meeting | 0.68d | 2021-11-10 | 2021-11-10 | 32 | 0d | SE16; TE45; DE8; PE12; RE9 | 27.2h |
| 34 | 1.5.3 | Rework | 1.61d | 2021-11-10 | 2021-11-12 | 33 | 0d | SE13; TE49; SE16 | 38.64h |
| 35 | 1.5.4 | Write Data Model(DM) | 10.42d | 2021-11-12 | 2021-11-26 | 34 | 0d | SE16; TE49; SE9 | 250.08h |
| 36 | 1.5.5 | **Review DM** | 0.73d | 2021-11-29 | 2021-11-29 |  | 0d |  | 25.04h |
| 37 | 1.5.5.1 | Prepration for DM | 0.52d | 2021-11-29 | 2021-11-29 | 35 | 0d | DE8; PE12; RE9; TE45 | 16.64h |
| 38 | 1.5.5.2 | Review Meeting DM | 0.21d | 2021-11-29 | 2021-11-29 | 37 | 0d | DE8; RE9; TE45; PE12; SE16 | 8.4h |
| 39 | 1.5.6 | Rework | 1.18d | 2021-11-29 | 2021-11-30 | 38 | 0d | SE16; TE49 | 18.88h |
| 40 | 1.6 | **Code and Unit Test** | 30.63d | 2021-11-30 | 2022-01-12 |  | 0d |  | 1208.4h |
| 41 | 1.6.1 | Write Code | 25.5d | 2021-11-30 | 2022-01-05 | 39 | 0d | PE4; PE5; PE7; PE12; PE8 | 1020h |
| 42 | 1.6.2 | **Unit Testing** | 2.39d | 2022-01-05 | 2022-01-07 |  | 0d |  | 95.6h |
| 43 | 1.6.2.1 | Prepare and Execute Test Cases | 0.81d | 2022-01-05 | 2022-01-06 | 41 | 0d | PE4; PE5; PE7; PE8; PE12 | 32.4h |
| 44 | 1.6.2.2 | Fix Found Defects | 1.05d | 2022-01-06 | 2022-01-07 | 43 | 0d | PE4; PE5; PE7; PE8; PE12 | 42h |
| 45 | 1.6.2.3 | Test Fix Defects | 0.53d | 2022-01-07 | 2022-01-07 | 44 | 0d | PE4; PE5; PE7; PE8; PE12 | 21.2h |
| 46 | 1.6.3 | **Code Inspection** | 1.7d | 2022-01-07 | 2022-01-11 |  | 0d |  | 59.52h |
| 47 | 1.6.3.1 | Prepration for Code Inspection | 1.06d | 2022-01-07 | 2022-01-10 | 45 | 0d | DE1; RE1; PE25; TE1 | 33.92h |
| 48 | 1.6.3.2 | Code Inspection Meeting | 0.64d | 2022-01-10 | 2022-01-11 | 47 | 0d | DE1; PE8; RE1; PE25; TE1 | 25.6h |
| 49 | 1.6.4 | Rework | 1.04d | 2022-01-11 | 2022-01-12 | 48 | 0d | PE4; PE5; PE7; PE8 | 33.28h |

| ID | WBS | Task | Type | Duration | Start | Finish | Predecessors | Total slack | Free slack | Resources | Work |
| --- | --- | --- | --- | --- | --- | --- | --- | --- | --- | --- | --- |
| 50 | 1.7 | **Testing** |  | 6.4d | 2022-01-12 | 2022-01-20 |  | 0d |  |  | 216.16h |
| 51 | 1.7.1 | Write Test Plan(TP) |  | 0.95d | 2022-01-12 | 2022-01-13 | 49 | 0d |  | TE1; TE2; TE3; TE7; TE8 | 38h |
| 52 | 1.7.2 | **Review TP** |  | 3.27d | 2022-01-13 | 2022-01-18 |  | 0d |  |  | 95.68h |
| 53 | 1.7.2.1 | Preparation for TP |  | 1.19d | 2022-01-13 | 2022-01-14 | 51 | 0d |  | DE2; PE8; RE2; SE13 | 38.08h |
| 54 | 1.7.2.2 | Review TP Meeting |  | 0.48d | 2022-01-14 | 2022-01-17 | 53 | 0d |  | DE2; PE8; RE2; SE13; TE2 | 19.2h |
| 55 | 1.7.2.3 | Rework |  | 1.6d | 2022-01-17 | 2022-01-18 | 54 | 0d |  | TE2; TE3; TE1 | 38.4h |
| 56 | 1.7.3 | Execute TP (test cases) |  | 0.65d | 2022-01-18 | 2022-01-19 | 55 | 0d |  | TE1; TE2; TE3; TE7; TE8 | 26h |
| 57 | 1.7.4 | Fix Found Defects |  | 0.94d | 2022-01-19 | 2022-01-20 | 56 | 0d |  | PE4; PE5; PE7; PE8; PE12 | 37.6h |
| 58 | 1.7.5 | Test Fixed Defects |  | 0.59d | 2022-01-20 | 2022-01-20 | 57 | 0d |  | TE2; TE3; TE8; TE1 | 18.88h |
| 59 | 1.8 | **Documentation** |  | 6.48d | 2021-10-28 | 2021-11-05 |  | 54.28d |  |  | 172.72h |
| 60 | 1.8.1 | User Documentation |  | 3.96d | 2021-10-28 | 2021-11-03 | 22 | 54.28d | 0d | DE1; DE2; DE13 | 95.04h |
| 61 | 1.8.2 | **Review UD** |  | 2.52d | 2021-11-03 | 2021-11-05 |  | 54.28d |  |  | 77.68h |
| 62 | 1.8.2.1 | Preparation for UD Review |  | 1.19d | 2021-11-03 | 2021-11-04 | 60 | 54.28d | 0d | TE2; SE12; RE10; PE13 | 38.08h |
| 63 | 1.8.2.2 | Review UD Meeting |  | 0.48d | 2021-11-04 | 2021-11-04 | 62 | 54.28d | 0d | TE2; SE12; RE10; PE13; DE13 | 19.2h |
| 64 | 1.8.2.3 | Rework |  | 0.85d | 2021-11-04 | 2021-11-05 | 63 | 54.28d |  | DE1; DE2; DE13 | 20.4h |
| 65 | 2 | **Project 2** |  | 69.27d | 2021-10-07 | 2022-01-12 |  | 0d |  |  | 5217.6h |
| 66 | 2.1 | **Project Plan** |  | 5.16d | 2021-10-07 | 2021-10-14 |  | 0d |  |  | 70.08h |
| 67 | 2.1.1 | Write Plan | manual | 2.38d | 2021-10-07 | 2021-10-11 |  |  |  | PM5 | 19.04h |
| 68 | 2.1.2 | **Review Plan** |  | 0.72d | 2021-10-11 | 2021-10-12 |  | 0d |  |  | 34.56h |
| 69 | 2.1.2.1 | Preparation for review | manual | 0.48d | 2021-10-11 | 2021-10-12 | 67 |  |  | DE85; PE65; PM5; RE33; SE35; TE73 | 23.04h |
| 70 | 2.1.2.2 | Review Meeting | manual | 0.24d | 2021-10-12 | 2021-10-12 | 69 |  |  | DE85; PE65; PM5; RE33; SE35; TE73 | 11.52h |
| 71 | 2.1.3 | Rework | manual | 2.06d | 2021-10-12 | 2021-10-14 | 70 |  |  | PM5 | 16.48h |
| 72 | 2.2 | **Requirement** |  | 15.28d | 2021-10-07 | 2021-10-28 |  | 0d |  |  | 194h |
| 73 | 2.2.1 | Write requirements | manual | 7.8d | 2021-10-07 | 2021-10-18 |  |  |  | RE32 | 62.4h |

| ID | WBS | Task | Type | Duration | Start | Finish | Predecessors | Total slack | Free slack | Resources | Work |
| --- | --- | --- | --- | --- | --- | --- | --- | --- | --- | --- | --- |
| 74 | 2.2.2 | **Review Requirements** |  | 2.73d | 2021-10-18 | 2021-10-21 |  | 0d |  |  | 93.6h |
| 75 | 2.2.2.1 | Preparation for review | manual | 1.95d | 2021-10-18 | 2021-10-20 | 73 |  |  | RE28; RE29; RE32; RE33 | 62.4h |
| 76 | 2.2.2.2 | Review Meeting | manual | 0.78d | 2021-10-20 | 2021-10-21 | 75 |  |  | RE15; RE28; RE29; RE32; RE33 | 31.2h |
| 77 | 2.2.3 | Rework | manual | 4.75d | 2021-10-21 | 2021-10-28 | 76 |  |  | RE33 | 38h |
| 78 | 2.3 | **Lab and Environment Setup** |  | 13d | 2021-10-07 | 2021-10-25 |  | 0d |  |  | 298h |
| 79 | 2.3.1 | **Hardware** |  | 13d | 2021-10-07 | 2021-10-25 |  | 0d |  |  | 192h |
| 80 | 2.3.1.1 | **Install Network Elements** |  | 2d | 2021-10-07 | 2021-10-08 |  | 0d |  |  | 24h |
| 81 | 2.3.1.1.1 | Routers | manual | 1d | 2021-10-07 | 2021-10-07 |  |  |  | SE35 | 8h |
| 82 | 2.3.1.1.2 | Bridge | manual | 2d | 2021-10-07 | 2021-10-08 |  |  |  | SE32 | 16h |
| 83 | 2.3.1.2 | Install Server | manual | 10d | 2021-10-11 | 2021-10-22 | 82 |  |  | SE32 | 80h |
| 84 | 2.3.1.3 | Install Clients | manual | 11d | 2021-10-11 | 2021-10-25 | 82 |  |  | SE11 | 88h |
| 85 | 2.3.2 | **Software** |  | 8d | 2021-10-07 | 2021-10-18 |  | 0d |  |  | 106h |
| 86 | 2.3.2.1 | Install Development Tools | manual | 8d | 2021-10-07 | 2021-10-18 |  |  |  | SE31 | 64h |
| 87 | 2.3.2.2 | Install Testing Tools | manual | 5.25d | 2021-10-07 | 2021-10-14 |  |  |  | SE30 | 42h |
| 88 | 2.4 | **Analysis/Design Document** |  | 23.8d | 2021-10-18 | 2021-11-19 | 77 | 0d |  |  | 257.2h |
| 89 | 2.4.1 | Write DD | manual | 12.08d | 2021-10-18 | 2021-11-03 |  |  |  | DE85 | 96.64h |
| 90 | 2.4.2 | **Review DD** |  | 2.54d | 2021-11-03 | 2021-11-08 |  | 0d |  |  | 87.12h |
| 91 | 2.4.2.1 | Preparation for DD | manual | 1.81d | 2021-11-03 | 2021-11-05 | 89 |  |  | DE81; DE82; DE84; DE85 | 57.92h |
| 92 | 2.4.2.2 | Review Meeting |  | 0.73d | 2021-11-05 | 2021-11-08 | 91 | 6.67d | 0d | DE45; DE81; DE82; DE84; DE85 | 29.2h |
| 93 | 2.4.3 | Rework |  | 9.18d | 2021-11-08 | 2021-11-19 | 92 | 6.67d | 0d | DE85 | 73.44h |
| 94 | 2.5 | **Data Model** |  | 10.46d | 2021-10-07 | 2021-10-21 |  | 0d |  |  | 91.6h |
| 95 | 2.5.1 | Create Data Model | manual | 4.25d | 2021-10-07 | 2021-10-13 |  |  |  | SE15 | 34h |
| 96 | 2.5.2 | **Review Data Model** |  | 0.3d | 2021-10-13 | 2021-10-13 |  | 0d |  |  | 10.32h |
| 97 | 2.5.2.1 | Preparation for DM | manual | 0.21d | 2021-10-13 | 2021-10-13 | 95 |  |  | TE7; TE8; TE44; TE45 | 6.72h |
| 98 | 2.5.2.2 | Review Meeting | manual | 0.09d | 2021-10-13 | 2021-10-13 | 97 |  |  | TE7; TE8; TE44; TE45; TE46 | 3.6h |
| 99 | 2.5.3 | Rework | manual | 5.91d | 2021-10-13 | 2021-10-21 | 98 |  |  | SE15 | 47.28h |

| ID | WBS | Task | Type | Duration | Start | Finish | Predecessors | Total slack | Free slack | Resources | Work |
| --- | --- | --- | --- | --- | --- | --- | --- | --- | --- | --- | --- |
| 100 | 2.6 | **Coding and unit test** |  | 37.67d | 2021-11-19 | 2022-01-12 |  | 6.67d |  |  | 2828.96h |
| 101 | 2.6.1 | Write Code |  | 18.52d | 2021-11-19 | 2021-12-16 | 93 | 6.67d | 0d | PE65; PE23; PE24; PE25; PE26; PE27; PE28; PE29; PE58; PE59 | 1481.6h |
| 102 | 2.6.2 | **Unit Testing** |  | 12.63d | 2021-12-16 | 2022-01-03 |  | 6.67d |  |  | 1010.4h |
| 103 | 2.6.2.1 | Prepare/Execute Test Cases |  | 6.39d | 2021-12-16 | 2021-12-24 | 101 | 6.67d | 0d | PE65; PE23; PE24; PE25; PE26; PE27; PE28; PE29; PE58; PE59 | 511.2h |
| 104 | 2.6.2.2 | Fix Found Defects |  | 4.46d | 2021-12-24 | 2021-12-30 | 103 | 6.67d | 0d | PE65; PE23; PE24; PE25; PE26; PE27; PE28; PE29; PE58; PE59 | 356.8h |
| 105 | 2.6.2.3 | Test Fixed Defects |  | 1.78d | 2021-12-30 | 2022-01-03 | 104 | 6.67d | 0d | PE65; PE23; PE24; PE25; PE26; PE27; PE28; PE29; PE58; PE59 | 142.4h |
| 106 | 2.6.3 | **Code Inspection** |  | 6.52d | 2022-01-03 | 2022-01-12 | 105 | 6.67d |  |  | 336.96h |
| 107 | 2.6.3.1 | Preparation for Code Inspection |  | 2.32d | 2022-01-03 | 2022-01-06 | 105 | 6.67d | 0d | PE65; PE29; PE58; PE59 | 74.24h |
| 108 | 2.6.3.2 | Code Inspection Meeting |  | 1.24d | 2022-01-06 | 2022-01-07 | 107 | 6.67d | 0d | PE65; PE29; PE58; PE59; PE28 | 49.6h |
| 109 | 2.6.3.3 | Rework |  | 2.96d | 2022-01-07 | 2022-01-12 | 108 | 6.67d |  | PE65; PE23; PE24; PE26; PE27; PE28; PE29; PE58; PE59 | 213.12h |
| 110 | 2.7 | **Testing** |  | 31.72d | 2021-10-28 | 2021-12-10 |  | 9.7d |  |  | 1142.96h |
| 111 | 2.7.1 | Write test plan (TP) |  | 2.84d | 2021-10-28 | 2021-11-02 | 72 | 33.16d | 0d | TE8; TE3; TE7; TE44; TE46; TE47; TE48; TE71; TE72; TE73 | 227.2h |
| 112 | 2.7.2 | **Review TP** |  | 3.32d | 2021-12-07 | 2021-12-10 |  | 0d |  |  | 151.76h |
| 113 | 2.7.2.1 | Preparation for TP | manual | 1.78d | 2021-12-07 | 2021-12-09 | 111 |  |  | TE2; TE3; TE7; TE8 | 56.96h |
| 114 | 2.7.2.2 | Review TP Meeting | manual | 0.71d | 2021-12-09 | 2021-12-10 | 113 |  |  | TE1; TE2; TE3; TE7; TE8 | 28.4h |
| 115 | 2.7.2.3 | Rework | manual | 0.83d | 2021-12-10 | 2021-12-10 | 114 |  |  | TE8; TE3; TE7; TE44; TE46; TE47; TE48; TE71; TE72; TE73 | 66.4h |
| 116 | 2.7.3 | Execute TP (test cases) |  | 5.53d | 2021-11-02 | 2021-11-09 | 111 | 33.16d | 1.33d | TE3; TE7; TE8; TE44; TE46; TE47; TE48; TE71; TE72; TE73 | 442.4h |
| 117 | 2.7.4 | Fix Found Defects | manual | 4.02d | 2021-11-10 | 2021-11-16 | 116 |  |  | TE3; TE7; TE8; TE44; TE46; TE47; TE48; TE71; TE72; TE73 | 321.6h |
| 118 | 2.8 | **Documentation** |  | 14.64d | 2021-10-28 | 2021-11-17 | 72 | 0d |  |  | 191.52h |
| 119 | 2.8.1 | User Documentation | manual | 7.43d | 2021-10-28 | 2021-11-08 | 77 |  |  | DE14 | 59.44h |
| 120 | 2.8.2 | **Review UD** |  | 7.21d | 2021-11-08 | 2021-11-17 |  | 0d |  |  | 132.08h |
| 121 | 2.8.2.1 | Preparation for UD review meeting | manual | 1.86d | 2021-11-08 | 2021-11-10 | 119 |  |  | DE13; DE14; DE43; DE44 | 59.52h |
| 122 | 2.8.2.2 | Review UD Meeting | manual | 0.93d | 2021-11-10 | 2021-11-11 | 121 |  |  | DE13; DE14; DE43; DE44; DE45 | 37.2h |
| 123 | 2.8.2.3 | Rework | manual | 4.42d | 2021-11-11 | 2021-11-17 | 122 |  |  | DE14 | 35.36h |

| ID | WBS | Task | Duration | Start | Finish | Predecessors | Total slack | Free slack | Resources | Work |
| --- | --- | --- | --- | --- | --- | --- | --- | --- | --- | --- |
| 124 | 2.9 | **Training** | 15.11d | 2021-11-17 | 2021-12-08 |  | 31.83d |  |  | 143.28h |
| 125 | 2.9.1 | Training Handouts (TH) | 11.25d | 2021-11-17 | 2021-12-02 | 117 | 31.83d | 0d | DE84 | 90h |
| 126 | 2.9.2 | **Review Training Handouts (TH)** | 3.86d | 2021-12-02 | 2021-12-08 |  | 31.83d |  |  | 53.28h |
| 127 | 2.9.2.1 | Preparation for TH review meeting | 0.56d | 2021-12-02 | 2021-12-02 | 125 | 31.83d | 0d | DE81; DE82; DE84; DE85 | 17.92h |
| 128 | 2.9.2.2 | Review TH Meeting | 0.28d | 2021-12-02 | 2021-12-03 | 127 | 31.83d | 0d | DE45; DE81; DE82; DE84; DE85 | 11.2h |
| 129 | 2.9.2.3 | Rework | 3.02d | 2021-12-03 | 2021-12-08 | 128 | 31.83d |  | DE85 | 24.16h |
