# Project Plan

Schedule from MS Project, 2021-09-27 to 2022-03-30, status date 2019-02-18.

## Calendars

- Standard: Mon-Fri 08:00-12:00, 13:00-17:00; Sat-Sun off.

## Resources

| Resource |
| --- |
| PM1 |
| PM2 |
| RE1 |
| RE2 |
| RE3 |
| RE7 |
| RE8 |
| RE10 |
| RE9 |
| RE15 |
| PM3 |
| RE13 |
| RE14 |
| PE25 |
| SE13 |
| TE49 |
| SE14 |
| SE15 |
| SE16 |
| SE9 |
| SE11 |
| SE12 |
| PE4 |
| PE5 |
| PE7 |
| PE8 |
| PE12 |
| PE13 |
| PE22 |
| PE23 |
| PE24 |
| TE1 |
| TE2 |
| TE3 |
| TE7 |
| TE8 |
| TE44 |
| TE45 |
| TE46 |
| DE1 |
| DE2 |
| DE7 |
| DE8 |
| DE13 |
| DE14 |
| DE43 |
| DE44 |
| DE45 |
| TE47 |
| TE48 |
| PE26 |
| PE27 |
| PE28 |
| PE29 |
| PM4 |
| PM5 |
| RE32 |
| RE28 |
| RE29 |
| RE33 |
| SE30 |
| SE31 |
| SE32 |
| SE35 |
| PE58 |
| PE59 |
| PE65 |
| TE71 |
| TE72 |
| TE73 |
| DE81 |
| DE82 |
| DE84 |
| DE85 |
| TE379 |
| TE380 |
| TE381 |
| TE382 |
| TE384 |
| TE385 |
| TE386 |
| SE3379 |
| SE380 |
| SE381 |
| SE382 |
| PE379 |
| PE380 |
| PE381 |
| DE379 |
| DE380 |
| DE381 |
| DE382 |

## Schedule

| ID | WBS | Task | Type | Duration | Start | Finish | Predecessors | Total slack | Free slack | Constraint | Resources | Work |
| --- | --- | --- | --- | --- | --- | --- | --- | --- | --- | --- | --- | --- |
| 1 | 1 | **Project 1** |  | 83.94d | 2021-09-27 | 2022-01-20 |  | 8.92d |  |  |  | 2798.16h |
| 2 | 1.1 | **Project Plan** |  | 6.53d | 2021-09-27 | 2021-10-05 |  | 48.56d | 2.39d |  |  | 71.44h |
| 3 | 1.1.1 | Write Plan |  | 5.19d | 2021-09-27 | 2021-10-04 |  | 48.56d | 0d | start no earlier than 2021-09-27 | PM1 | 41.52h |
| 4 | 1.1.2 | **Review Plan** |  | 0.73d | 2021-10-04 | 2021-10-04 |  | 48.56d |  |  |  | 25.04h |
| 5 | 1.1.2.1 | Prepration Review |  | 0.52d | 2021-10-04 | 2021-10-04 | 3 | 48.56d | 0d |  | PE4; RE1; PE25; TE1 | 16.64h |
| 6 | 1.1.2.2 | Review Meeting |  | 0.21d | 2021-10-04 | 2021-10-04 | 5 | 48.56d | 0d |  | PE4; PE25; RE1; TE1; PM1 | 8.4h |
| 7 | 1.1.3 | Rework |  | 0.61d | 2021-10-04 | 2021-10-05 | 6 | 48.56d | 0d |  | PM1 | 4.88h |
| 8 | 1.2 | **Risk Mitigation and Contingency Plan** |  | 11.92d | 2021-10-07 | 2021-10-25 |  | 0d |  |  |  | 29.04h |
| 9 | 1.2.1 | Write Plan | manual | 0.28d | 2021-10-07 | 2021-10-08 | 2 |  |  |  | DE45; PE29; RE15; SE16; TE49 | 11.2h |
| 10 | 1.2.2 | **Review Plan** |  | 0.61d | 2021-10-11 | 2021-10-11 |  | 0d |  |  |  | 6.8h |
| 11 | 1.2.2.1 | Preparation for review | manual | 0.11d | 2021-10-11 | 2021-10-11 | 9 |  |  |  | DE45; PE29; RE15; SE16; TE49 | 4.4h |
| 12 | 1.2.2.2 | Review Meeting | manual | 0.06d | 2021-10-11 | 2021-10-11 | 11 |  |  |  | DE45; PE29; RE15; SE16; TE49 | 2.4h |
| 13 | 1.2.3 | Rework | manual | 8.54d | 2021-10-13 | 2021-10-25 | 12 |  |  |  | DE45; PE29; RE15; SE16; TE49; PM3 | 11.04h |
| 14 | 1.3 | **Requirement** |  | 16.65d | 2021-10-05 | 2021-10-28 |  | 48.56d |  |  |  | 516.24h |
| 15 | 1.3.1 | Write Requirement |  | 1.83d | 2021-10-05 | 2021-10-07 | 7 | 48.56d | 0d |  | RE1; RE2; RE3; RE10 | 58.56h |
| 16 | 1.3.2 | Write use case Model |  | 12.25d | 2021-10-07 | 2021-10-25 | 15 | 48.56d | 0d |  | RE14; RE13; PM3; RE7 | 392h |
| 17 | 1.3.3 | **Review Requirements/ Use Case Model** |  | 13.11d | 2021-10-07 | 2021-10-26 |  | 60.81d |  |  |  | 38.32h |
| 18 | 1.3.3.1 | prepration for review(req) |  | 0.15d | 2021-10-07 | 2021-10-07 | 15 | 123.89d | 0d |  | DE1; PE4; SE13; TE2 | 4.8h |
| 19 | 1.3.3.2 | prepration for review(use case) |  | 0.61d | 2021-10-25 | 2021-10-26 | 16 | 48.56d | 0d |  | DE1; PE4; SE13; TE2 | 19.52h |
| 20 | 1.3.3.3 | Review Meeting(req) |  | 0.1d | 2021-10-07 | 2021-10-07 | 18 | 123.89d |  |  | DE1; RE1; PE4; SE13; TE2 | 4h |
| 21 | 1.3.3.4 | Review Meeting(use case) |  | 0.25d | 2021-10-26 | 2021-10-26 | 19 | 48.56d | 0d |  | DE1; RE1; SE13; PE4; TE2 | 10h |
| 22 | 1.3.4 | Rework |  | 1.71d | 2021-10-26 | 2021-10-28 | 21 | 48.56d | 0d |  | RE1; RE7 | 27.36h |
| 23 | 1.4 | **Analysis** |  | 3.23d | 2021-10-28 | 2021-11-02 |  | 48.56d |  |  |  | 72.32h |
| 24 | 1.4.1 | Write Analysis Document |  | 1.61d | 2021-10-28 | 2021-10-29 | 22 | 48.56d | 0d |  | PE25; TE49 | 25.76h |

| ID | WBS | Task | Duration | Start | Finish | Predecessors | Total slack | Free slack | Resources | Work |
| --- | --- | --- | --- | --- | --- | --- | --- | --- | --- | --- |
| 25 | 1.4.2 | **Review Analysis Document** | 1.13d | 2021-10-29 | 2021-11-01 |  | 48.56d |  |  | 38.72h |
| 26 | 1.4.2.1 | Prepration for Analysis Document | 0.81d | 2021-10-29 | 2021-11-01 | 24 | 48.56d | 0d | DE7; PE4; RE2; TE1 | 25.92h |
| 27 | 1.4.2.2 | Review Meeting | 0.32d | 2021-11-01 | 2021-11-01 | 26 | 48.56d | 0d | TE1; DE7; PE4; RE2; TE49 | 12.8h |
| 28 | 1.4.3 | Rework | 0.49d | 2021-11-01 | 2021-11-02 | 27 | 48.56d | 0d | PE25; TE49 | 7.84h |
| 29 | 1.5 | **Design** | 20.5d | 2021-11-02 | 2021-11-30 |  | 48.56d |  |  | 511.84h |
| 30 | 1.5.1 | Write DD | 4.52d | 2021-11-02 | 2021-11-08 | 28 | 48.56d | 0d | TE49; SE13; SE16 | 108.48h |
| 31 | 1.5.2 | **Review DD** | 2.04d | 2021-11-08 | 2021-11-10 |  | 48.56d |  |  | 70.72h |
| 32 | 1.5.2.1 | Prepration for DD | 1.36d | 2021-11-08 | 2021-11-10 | 30 | 48.56d | 0d | TE45; DE8; PE12; RE9 | 43.52h |
| 33 | 1.5.2.2 | Review Meeting | 0.68d | 2021-11-10 | 2021-11-10 | 32 | 48.56d | 0d | SE16; TE45; DE8; PE12; RE9 | 27.2h |
| 34 | 1.5.3 | Rework | 1.61d | 2021-11-10 | 2021-11-12 | 33 | 48.56d | 0d | SE13; TE49; SE16 | 38.64h |
| 35 | 1.5.4 | Write Data Model(DM) | 10.42d | 2021-11-12 | 2021-11-26 | 34 | 48.56d | 0d | SE16; TE49; SE9 | 250.08h |
| 36 | 1.5.5 | **Review DM** | 0.73d | 2021-11-29 | 2021-11-29 |  | 48.56d |  |  | 25.04h |
| 37 | 1.5.5.1 | Prepration for DM | 0.52d | 2021-11-29 | 2021-11-29 | 35 | 48.56d | 0d | DE8; PE12; RE9; TE45 | 16.64h |
| 38 | 1.5.5.2 | Review Meeting DM | 0.21d | 2021-11-29 | 2021-11-29 | 37 | 48.56d | 0d | DE8; RE9; TE45; PE12; SE16 | 8.4h |
| 39 | 1.5.6 | Rework | 1.18d | 2021-11-29 | 2021-11-30 | 38 | 48.56d | 0d | SE16; TE49 | 18.88h |
| 40 | 1.6 | **Code and Unit Test** | 30.63d | 2021-11-30 | 2022-01-12 |  | 48.56d |  |  | 1208.4h |
| 41 | 1.6.1 | Write Code | 25.5d | 2021-11-30 | 2022-01-05 | 39 | 48.56d | 0d | PE4; PE5; PE7; PE12; PE8 | 1020h |
| 42 | 1.6.2 | **Unit Testing** | 2.39d | 2022-01-05 | 2022-01-07 |  | 48.56d |  |  | 95.6h |
| 43 | 1.6.2.1 | Prepare and Execute Test Cases | 0.81d | 2022-01-05 | 2022-01-06 | 41 | 48.56d | 0d | PE4; PE5; PE7; PE8; PE12 | 32.4h |
| 44 | 1.6.2.2 | Fix Found Defects | 1.05d | 2022-01-06 | 2022-01-07 | 43 | 48.56d | 0d | PE4; PE5; PE7; PE8; PE12 | 42h |
| 45 | 1.6.2.3 | Test Fix Defects | 0.53d | 2022-01-07 | 2022-01-07 | 44 | 48.56d | 0d | PE4; PE5; PE7; PE8; PE12 | 21.2h |
| 46 | 1.6.3 | **Code Inspection** | 1.7d | 2022-01-07 | 2022-01-11 |  | 48.56d |  |  | 59.52h |
| 47 | 1.6.3.1 | Prepration for Code Inspection | 1.06d | 2022-01-07 | 2022-01-10 | 45 | 48.56d | 0d | DE1; RE1; PE25; TE1 | 33.92h |
| 48 | 1.6.3.2 | Code Inspection Meeting | 0.64d | 2022-01-10 | 2022-01-11 | 47 | 48.56d | 0d | DE1; PE8; RE1; PE25; TE1 | 25.6h |
| 49 | 1.6.4 | Rework | 1.04d | 2022-01-11 | 2022-01-12 | 48 | 48.56d | 0d | PE4; PE5; PE7; PE8 | 33.28h |

| ID | WBS | Task | Type | Duration | Start | Finish | Predecessors | Total slack | Free slack | Resources | Work |
| --- | --- | --- | --- | --- | --- | --- | --- | --- | --- | --- | --- |
| 50 | 1.7 | **Testing** |  | 6.4d | 2022-01-12 | 2022-01-20 |  | 48.56d |  |  | 216.16h |
| 51 | 1.7.1 | Write Test Plan(TP) |  | 0.95d | 2022-01-12 | 2022-01-13 | 49 | 48.56d | 0d | TE1; TE2; TE3; TE7; TE8 | 38h |
| 52 | 1.7.2 | **Review TP** |  | 3.27d | 2022-01-13 | 2022-01-18 |  | 48.56d |  |  | 95.68h |
| 53 | 1.7.2.1 | Preparation for TP |  | 1.19d | 2022-01-13 | 2022-01-14 | 51 | 48.56d | 0d | DE2; PE8; RE2; SE13 | 38.08h |
| 54 | 1.7.2.2 | Review TP Meeting |  | 0.48d | 2022-01-14 | 2022-01-17 | 53 | 48.56d | 0d | DE2; PE8; RE2; SE13; TE2 | 19.2h |
| 55 | 1.7.2.3 | Rework |  | 1.6d | 2022-01-17 | 2022-01-18 | 54 | 48.56d | 0d | TE2; TE3; TE1 | 38.4h |
| 56 | 1.7.3 | Execute TP (test cases) |  | 0.65d | 2022-01-18 | 2022-01-19 | 55 | 48.56d | 0d | TE1; TE2; TE3; TE7; TE8 | 26h |
| 57 | 1.7.4 | Fix Found Defects |  | 0.94d | 2022-01-19 | 2022-01-20 | 56 | 48.56d | 0d | PE4; PE5; PE7; PE8; PE12 | 37.6h |
| 58 | 1.7.5 | Test Fixed Defects |  | 0.59d | 2022-01-20 | 2022-01-20 | 57 | 48.56d |  | TE2; TE3; TE8; TE1 | 18.88h |
| 59 | 1.8 | **Documentation** |  | 6.48d | 2021-10-28 | 2021-11-05 |  | 102.84d |  |  | 172.72h |
| 60 | 1.8.1 | User Documentation |  | 3.96d | 2021-10-28 | 2021-11-03 | 22 | 102.84d | 0d | DE1; DE2; DE13 | 95.04h |
| 61 | 1.8.2 | **Review UD** |  | 2.52d | 2021-11-03 | 2021-11-05 |  | 102.84d |  |  | 77.68h |
| 62 | 1.8.2.1 | Preparation for UD Review |  | 1.19d | 2021-11-03 | 2021-11-04 | 60 | 102.84d | 0d | TE2; SE12; RE10; PE13 | 38.08h |
| 63 | 1.8.2.2 | Review UD Meeting |  | 0.48d | 2021-11-04 | 2021-11-04 | 62 | 102.84d | 0d | TE2; SE12; RE10; PE13; DE13 | 19.2h |
| 64 | 1.8.2.3 | Rework |  | 0.85d | 2021-11-04 | 2021-11-05 | 63 | 102.84d |  | DE1; DE2; DE13 | 20.4h |
| 65 | 2 | **Project 2** |  | 69.27d | 2021-10-07 | 2022-01-12 |  | 0d |  |  | 5217.6h |
| 66 | 2.1 | **Project Plan** |  | 5.16d | 2021-10-07 | 2021-10-14 |  | 0d |  |  | 70.08h |
| 67 | 2.1.1 | Write Plan | manual | 2.38d | 2021-10-07 | 2021-10-11 |  |  |  | PM5 | 19.04h |
| 68 | 2.1.2 | **Review Plan** |  | 0.72d | 2021-10-11 | 2021-10-12 |  | 0d |  |  | 34.56h |
| 69 | 2.1.2.1 | Preparation for review | manual | 0.48d | 2021-10-11 | 2021-10-12 | 67 |  |  | DE85; PE65; PM5; RE33; SE35; TE73 | 23.04h |
| 70 | 2.1.2.2 | Review Meeting | manual | 0.24d | 2021-10-12 | 2021-10-12 | 69 |  |  | DE85; PE65; PM5; RE33; SE35; TE73 | 11.52h |
| 71 | 2.1.3 | Rework | manual | 2.06d | 2021-10-12 | 2021-10-14 | 70 |  |  | PM5 | 16.48h |
| 72 | 2.2 | **Requirement** |  | 15.28d | 2021-10-07 | 2021-10-28 |  | 0d |  |  | 194h |
| 73 | 2.2.1 | Write requirements | manual | 7.8d | 2021-10-07 | 2021-10-18 |  |  |  | RE32 | 62.4h |

| ID | WBS | Task | Type | Duration | Start | Finish | Predecessors | Total slack | Free slack | Resources | Work |
| --- | --- | --- | --- | --- | --- | --- | --- | --- | --- | --- | --- |
| 74 | 2.2.2 | **Review Requirements** |  | 2.73d | 2021-10-18 | 2021-10-21 |  | 0d |  |  | 93.6h |
| 75 | 2.2.2.1 | Preparation for review | manual | 1.95d | 2021-10-18 | 2021-10-20 | 73 |  |  | RE28; RE29; RE32; RE33 | 62.4h |
| 76 | 2.2.2.2 | Review Meeting | manual | 0.78d | 2021-10-20 | 2021-10-21 | 75 |  |  | RE15; RE28; RE29; RE32; RE33 | 31.2h |
| 77 | 2.2.3 | Rework | manual | 4.75d | 2021-10-21 | 2021-10-28 | 76 |  |  | RE33 | 38h |
| 78 | 2.3 | **Lab and Environment Setup** |  | 13d | 2021-10-07 | 2021-10-25 |  | 0d |  |  | 298h |
| 79 | 2.3.1 | **Hardware** |  | 13d | 2021-10-07 | 2021-10-25 |  | 0d |  |  | 192h |
| 80 | 2.3.1.1 | **Install Network Elements** |  | 2d | 2021-10-07 | 2021-10-08 |  | 0d |  |  | 24h |
| 81 | 2.3.1.1.1 | Routers | manual | 1d | 2021-10-07 | 2021-10-07 |  |  |  | SE35 | 8h |
| 82 | 2.3.1.1.2 | Bridge | manual | 2d | 2021-10-07 | 2021-10-08 |  |  |  | SE32 | 16h |
| 83 | 2.3.1.2 | Install Server | manual | 10d | 2021-10-11 | 2021-10-22 | 82 |  |  | SE32 | 80h |
| 84 | 2.3.1.3 | Install Clients | manual | 11d | 2021-10-11 | 2021-10-25 | 82 |  |  | SE11 | 88h |
| 85 | 2.3.2 | **Software** |  | 8d | 2021-10-07 | 2021-10-18 |  | 0d |  |  | 106h |
| 86 | 2.3.2.1 | Install Development Tools | manual | 8d | 2021-10-07 | 2021-10-18 |  |  |  | SE31 | 64h |
| 87 | 2.3.2.2 | Install Testing Tools | manual | 5.25d | 2021-10-07 | 2021-10-14 |  |  |  | SE30 | 42h |
| 88 | 2.4 | **Analysis/Design Document** |  | 23.8d | 2021-10-18 | 2021-11-19 | 77 | 0d |  |  | 257.2h |
| 89 | 2.4.1 | Write DD | manual | 12.08d | 2021-10-18 | 2021-11-03 |  |  |  | DE85 | 96.64h |
| 90 | 2.4.2 | **Review DD** |  | 2.54d | 2021-11-03 | 2021-11-08 |  | 0d |  |  | 87.12h |
| 91 | 2.4.2.1 | Preparation for DD | manual | 1.81d | 2021-11-03 | 2021-11-05 | 89 |  |  | DE81; DE82; DE84; DE85 | 57.92h |
| 92 | 2.4.2.2 | Review Meeting |  | 0.73d | 2021-11-05 | 2021-11-08 | 91 | 55.23d | 0d | DE45; DE81; DE82; DE84; DE85 | 29.2h |
| 93 | 2.4.3 | Rework |  | 9.18d | 2021-11-08 | 2021-11-19 | 92 | 55.23d | 0d | DE85 | 73.44h |
| 94 | 2.5 | **Data Model** |  | 10.46d | 2021-10-07 | 2021-10-21 |  | 0d |  |  | 91.6h |
| 95 | 2.5.1 | Create Data Model | manual | 4.25d | 2021-10-07 | 2021-10-13 |  |  |  | SE15 | 34h |
| 96 | 2.5.2 | **Review Data Model** |  | 0.3d | 2021-10-13 | 2021-10-13 |  | 0d |  |  | 10.32h |
| 97 | 2.5.2.1 | Preparation for DM | manual | 0.21d | 2021-10-13 | 2021-10-13 | 95 |  |  | TE7; TE8; TE44; TE45 | 6.72h |
| 98 | 2.5.2.2 | Review Meeting | manual | 0.09d | 2021-10-13 | 2021-10-13 | 97 |  |  | TE7; TE8; TE44; TE45; TE46 | 3.6h |
| 99 | 2.5.3 | Rework | manual | 5.91d | 2021-10-13 | 2021-10-21 | 98 |  |  | SE15 | 47.28h |

| ID | WBS | Task | Type | Duration | Start | Finish | Predecessors | Total slack | Free slack | Resources | Work |
| --- | --- | --- | --- | --- | --- | --- | --- | --- | --- | --- | --- |
| 100 | 2.6 | **Coding and unit test** |  | 37.67d | 2021-11-19 | 2022-01-12 |  | 55.23d |  |  | 2828.96h |
| 101 | 2.6.1 | Write Code |  | 18.52d | 2021-11-19 | 2021-12-16 | 93 | 55.23d | 0d | PE65; PE23; PE24; PE25; PE26; PE27; PE28; PE29; PE58; PE59 | 1481.6h |
| 102 | 2.6.2 | **Unit Testing** |  | 12.63d | 2021-12-16 | 2022-01-03 |  | 55.23d |  |  | 1010.4h |
| 103 | 2.6.2.1 | Prepare/Execute Test Cases |  | 6.39d | 2021-12-16 | 2021-12-24 | 101 | 55.23d | 0d | PE65; PE23; PE24; PE25; PE26; PE27; PE28; PE29; PE58; PE59 | 511.2h |
| 104 | 2.6.2.2 | Fix Found Defects |  | 4.46d | 2021-12-24 | 2021-12-30 | 103 | 55.23d | 0d | PE65; PE23; PE24; PE25; PE26; PE27; PE28; PE29; PE58; PE59 | 356.8h |
| 105 | 2.6.2.3 | Test Fixed Defects |  | 1.78d | 2021-12-30 | 2022-01-03 | 104 | 55.23d | 0d | PE65; PE23; PE24; PE25; PE26; PE27; PE28; PE29; PE58; PE59 | 142.4h |
| 106 | 2.6.3 | **Code Inspection** |  | 6.52d | 2022-01-03 | 2022-01-12 | 105 | 55.23d |  |  | 336.96h |
| 107 | 2.6.3.1 | Preparation for Code Inspection |  | 2.32d | 2022-01-03 | 2022-01-06 | 105 | 55.23d | 0d | PE65; PE29; PE58; PE59 | 74.24h |
| 108 | 2.6.3.2 | Code Inspection Meeting |  | 1.24d | 2022-01-06 | 2022-01-07 | 107 | 55.23d | 0d | PE65; PE29; PE58; PE59; PE28 | 49.6h |
| 109 | 2.6.3.3 | Rework |  | 2.96d | 2022-01-07 | 2022-01-12 | 108 | 55.23d |  | PE65; PE23; PE24; PE26; PE27; PE28; PE29; PE58; PE59 | 213.12h |
| 110 | 2.7 | **Testing** |  | 31.72d | 2021-10-28 | 2021-12-10 |  | 9.7d |  |  | 1142.96h |
| 111 | 2.7.1 | Write test plan (TP) |  | 2.84d | 2021-10-28 | 2021-11-02 | 72 | 81.72d | 0d | TE8; TE3; TE7; TE44; TE46; TE47; TE48; TE71; TE72; TE73 | 227.2h |
| 112 | 2.7.2 | **Review TP** |  | 3.32d | 2021-12-07 | 2021-12-10 |  | 0d |  |  | 151.76h |
| 113 | 2.7.2.1 | Preparation for TP | manual | 1.78d | 2021-12-07 | 2021-12-09 | 111 |  |  | TE2; TE3; TE7; TE8 | 56.96h |
| 114 | 2.7.2.2 | Review TP Meeting | manual | 0.71d | 2021-12-09 | 2021-12-10 | 113 |  |  | TE1; TE2; TE3; TE7; TE8 | 28.4h |
| 115 | 2.7.2.3 | Rework | manual | 0.83d | 2021-12-10 | 2021-12-10 | 114 |  |  | TE8; TE3; TE7; TE44; TE46; TE47; TE48; TE71; TE72; TE73 | 66.4h |
| 116 | 2.7.3 | Execute TP (test cases) |  | 5.53d | 2021-11-02 | 2021-11-09 | 111 | 81.72d | 1.33d | TE3; TE7; TE8; TE44; TE46; TE47; TE48; TE71; TE72; TE73 | 442.4h |
| 117 | 2.7.4 | Fix Found Defects | manual | 4.02d | 2021-11-10 | 2021-11-16 | 116 |  |  | TE3; TE7; TE8; TE44; TE46; TE47; TE48; TE71; TE72; TE73 | 321.6h |
| 118 | 2.8 | **Documentation** |  | 14.64d | 2021-10-28 | 2021-11-17 | 72 | 0d |  |  | 191.52h |
| 119 | 2.8.1 | User Documentation | manual | 7.43d | 2021-10-28 | 2021-11-08 | 77 |  |  | DE14 | 59.44h |
| 120 | 2.8.2 | **Review UD** |  | 7.21d | 2021-11-08 | 2021-11-17 |  | 0d |  |  | 132.08h |
| 121 | 2.8.2.1 | Preparation for UD review meeting | manual | 1.86d | 2021-11-08 | 2021-11-10 | 119 |  |  | DE13; DE14; DE43; DE44 | 59.52h |
| 122 | 2.8.2.2 | Review UD Meeting | manual | 0.93d | 2021-11-10 | 2021-11-11 | 121 |  |  | DE13; DE14; DE43; DE44; DE45 | 37.2h |
| 123 | 2.8.2.3 | Rework | manual | 4.42d | 2021-11-11 | 2021-11-17 | 122 |  |  | DE14 | 35.36h |

| ID | WBS | Task | Duration | Start | Finish | Predecessors | Total slack | Free slack | Resources | Work |
| --- | --- | --- | --- | --- | --- | --- | --- | --- | --- | --- |
| 124 | 2.9 | **Training** | 15.11d | 2021-11-17 | 2021-12-08 |  | 80.39d |  |  | 143.28h |
| 125 | 2.9.1 | Training Handouts (TH) | 11.25d | 2021-11-17 | 2021-12-02 | 117 | 80.39d | 0d | DE84 | 90h |
| 126 | 2.9.2 | **Review Training Handouts (TH)** | 3.86d | 2021-12-02 | 2021-12-08 |  | 80.39d |  |  | 53.28h |
| 127 | 2.9.2.1 | Preparation for TH review meeting | 0.56d | 2021-12-02 | 2021-12-02 | 125 | 80.39d | 0d | DE81; DE82; DE84; DE85 | 17.92h |
| 128 | 2.9.2.2 | Review TH Meeting | 0.28d | 2021-12-02 | 2021-12-03 | 127 | 80.39d | 0d | DE45; DE81; DE82; DE84; DE85 | 11.2h |
| 129 | 2.9.2.3 | Rework | 3.02d | 2021-12-03 | 2021-12-08 | 128 | 80.39d |  | DE85 | 24.16h |
| 130 | 3 | **Project 3** | 112.5d | 2021-10-25 | 2022-03-30 |  |  |  |  | 5460.16h |
| 131 | 3.1 | **Project Plan** | 8.19d | 2021-10-25 | 2021-11-04 |  | 92.31d |  |  | 109.04h |
| 132 | 3.1.1 | Write Plan | 5.63d | 2021-10-25 | 2021-11-01 |  | 92.31d | 0d | PM4 | 45.04h |
| 133 | 3.1.2 | **Review Plan** | 0.68d | 2021-11-01 | 2021-11-02 |  | 92.31d |  |  | 48.96h |
| 134 | 3.1.2.1 | Preparation for Review | 0.45d | 2021-11-01 | 2021-11-02 | 132 | 92.31d | 0d | PM4; SE381; PE380; RE28; RE29; TE382; TE384; TE385; DE43 | 32.4h |
| 135 | 3.1.2.2 | Review Meeting | 0.23d | 2021-11-02 | 2021-11-02 | 134 | 92.31d | 0d | PM4; SE381; PE380; RE28; RE29; TE382; TE384; TE385; DE43 | 16.56h |
| 136 | 3.1.3 | Rework | 1.88d | 2021-11-02 | 2021-11-04 | 135 | 92.31d | 0d | PM4 | 15.04h |
| 137 | 3.2 | **Documented Software Development Process Updates** | 1.8d | 2021-10-25 | 2021-10-26 |  | 0d |  |  | 86.4h |
| 138 | 3.2.1 | Process Changes | 1d | 2021-10-25 | 2021-10-25 |  | 0d |  | DE382; PE381; RE32; SE3379; TE386; PM2 | 48h |
| 139 | 3.2.2 | **Review Changes** | 0.63d | 2021-10-26 | 2021-10-26 |  | 0d |  |  | 30.24h |
| 140 | 3.2.2.1 | Preparation for Review | 0.42d | 2021-10-26 | 2021-10-26 | 138 | 0d |  | DE382; PE381; RE32; SE3379; TE386; PM2 | 20.16h |
| 141 | 3.2.2.2 | Review Meeting | 0.21d | 2021-10-26 | 2021-10-26 | 140 | 0d |  | DE382; PE381; RE32; SE3379; TE386; PM2 | 10.08h |
| 142 | 3.2.3 | Rework | 0.17d | 2021-10-26 | 2021-10-26 | 141 | 0d |  | DE382; PE381; RE32; SE3379; TE386; PM2 | 8.16h |
| 143 | 3.3 | **Requirement** | 10.99d | 2021-10-26 | 2021-11-10 |  | 0d |  |  | 104.4h |
| 144 | 3.3.1 | Write Requirements | 6.38d | 2021-10-26 | 2021-11-04 | 142 | 0d |  | DE381 | 51.04h |
| 145 | 3.3.2 | **Review Requirements** | 0.61d | 2021-11-04 | 2021-11-04 |  | 90.13d |  |  | 21.36h |
| 146 | 3.3.2.1 | Preparation for Review | 0.38d | 2021-11-04 | 2021-11-04 | 144 | 90.13d | 0d | DE379; DE380; DE45; DE44 | 12.16h |
| 147 | 3.3.2.2 | Review Meeting | 0.23d | 2021-11-04 | 2021-11-04 | 146 | 90.13d | 0d | DE379; DE380; DE381; DE45; DE44 | 9.2h |
| 148 | 3.3.3 | Rework | 4d | 2021-11-04 | 2021-11-10 | 147 | 90.13d | 0d | DE381 | 32h |

| ID | WBS | Task | Duration | Start | Finish | Predecessors | Total slack | Free slack | Resources | Work |
| --- | --- | --- | --- | --- | --- | --- | --- | --- | --- | --- |
| 149 | 3.4 | **Build the development and testing lab environment** | 12d | 2021-11-04 | 2021-11-22 | 136 | 92.31d |  |  | 224h |
| 150 | 3.4.1 | **Hardware Environment** | 12d | 2021-11-04 | 2021-11-22 |  | 92.31d |  |  | 140h |
| 151 | 3.4.1.1 | Servers | 12d | 2021-11-04 | 2021-11-22 |  | 92.31d |  | SE381 | 96h |
| 152 | 3.4.1.2 | Clients | 5.5d | 2021-11-04 | 2021-11-11 |  | 98.81d |  | SE30 | 44h |
| 153 | 3.4.2 | **Software Development Tools** | 1d | 2021-11-04 | 2021-11-05 |  | 103.31d |  |  | 8h |
| 154 | 3.4.2.1 | Build/Compile Tools | 1d | 2021-11-04 | 2021-11-05 |  | 103.31d |  | SE35 | 8h |
| 155 | 3.4.3 | **Software Testing Tools** | 6d | 2021-11-04 | 2021-11-12 |  | 98.31d |  |  | 76h |
| 156 | 3.4.3.1 | Test Cases Execution Tools | 3.5d | 2021-11-04 | 2021-11-09 |  | 100.81d |  | SE32 | 28h |
| 157 | 3.4.3.2 | Simulation Tools | 6d | 2021-11-04 | 2021-11-12 |  | 98.31d |  | SE31 | 48h |
| 158 | 3.5 | **Analysis** | 11.43d | 2021-11-04 | 2021-11-19 |  | 0d |  |  | 155.12h |
| 159 | 3.5.1 | Write Analysis Document | 6.88d | 2021-11-04 | 2021-11-15 | 144 | 0d |  | DE382 | 55.04h |
| 160 | 3.5.2 | **Review Analysis Document** | 2.42d | 2021-11-15 | 2021-11-17 |  | 92.89d |  |  | 83.04h |
| 161 | 3.5.2.1 | Preparation for Analysis Document | 1.72d | 2021-11-15 | 2021-11-16 | 159 | 92.89d | 0d | DE45; DE81; DE8; DE13 | 55.04h |
| 162 | 3.5.2.2 | Review Meeting | 0.7d | 2021-11-16 | 2021-11-17 | 161 | 92.89d | 0d | DE45; DE81; DE382; DE13; DE8 | 28h |
| 163 | 3.5.3 | Rework | 2.13d | 2021-11-17 | 2021-11-19 | 162 | 92.89d |  | DE382 | 17.04h |
| 164 | 3.6 | **Design** | 5.43d | 2021-11-15 | 2021-11-22 |  | 0d |  |  | 146.24h |
| 165 | 3.6.1 | Write DD | 2.75d | 2021-11-15 | 2021-11-17 | 159 | 0d |  | SE382; SE3379; TE385 | 66h |
| 166 | 3.6.2 | **Review DD** | 1.51d | 2021-11-17 | 2021-11-19 |  | 92.01d |  |  | 52.16h |
| 167 | 3.6.2.1 | Preparation for DD | 1.03d | 2021-11-17 | 2021-11-18 | 165 | 92.01d | 0d | PE381; RE33; TE385; DE380 | 32.96h |
| 168 | 3.6.2.2 | Review Meeting | 0.48d | 2021-11-18 | 2021-11-19 | 167 | 92.01d | 0d | PE381; RE33; TE385; DE380; SE3379 | 19.2h |
| 169 | 3.6.3 | Rework | 1.17d | 2021-11-19 | 2021-11-22 | 168 | 92.01d |  | SE382; SE3379; TE386 | 28.08h |
| 170 | 3.7 | **Coding** | 90.7d | 2021-11-17 | 2022-03-24 |  | 0d |  |  | 4063.68h |
| 171 | 3.7.1 | Write Code | 49.88d | 2021-11-17 | 2022-01-26 | 165 | 0d |  | PE379; PE380 | 798.08h |
| 172 | 3.7.2 | **Unit Testing** | 32.88d | 2022-01-26 | 2022-03-14 |  | 0d |  |  | 2630.4h |
| 173 | 3.7.2.1 | Prepare/Execute Test Cases | 15.69d | 2022-01-26 | 2022-02-17 | 171 | 0d |  | PE26; PE27; PE28; PE29; PE58; PE59; PE65; PE379; PE380; PE25 | 1255.2h |
| 174 | 3.7.2.2 | Fix Found Defects | 11.69d | 2022-02-17 | 2022-03-07 | 173 | 0d |  | PE26; PE27; PE28; PE29; PE58; PE59; PE65; PE379; PE380; PE25 | 935.2h |
| 175 | 3.7.2.3 | Test Fixed Defects | 5.5d | 2022-03-07 | 2022-03-14 | 174 | 0d |  | PE26; PE27; PE28; PE29; PE58; PE59; PE65; PE379; PE380; PE25 | 440h |

| ID | WBS | Task | Duration | Start | Finish | Predecessors | Total slack | Free slack | Resources | Work |
| --- | --- | --- | --- | --- | --- | --- | --- | --- | --- | --- |
| 176 | 3.7.3 | **Code Inspection** | 7.94d | 2022-03-14 | 2022-03-24 |  | 0d |  |  | 635.2h |
| 177 | 3.7.3.1 | Preparation for Code Inspection | 2d | 2022-03-14 | 2022-03-16 | 175 | 0d |  | PE26; PE27; PE28; PE29; PE58; PE59; PE65; PE379; PE380; PE25 | 160h |
| 178 | 3.7.3.2 | Code Inspection Meeting | 1.44d | 2022-03-16 | 2022-03-18 | 177 | 0d |  | PE26; PE27; PE28; PE29; PE58; PE59; PE65; PE379; PE380; PE25 | 115.2h |
| 179 | 3.7.3.3 | Rework | 4.5d | 2022-03-18 | 2022-03-24 | 178 | 0d |  | PE26; PE27; PE28; PE29; PE58; PE59; PE65; PE379; PE380; PE25 | 360h |
| 180 | 3.8 | **Testing** | 99.71d | 2021-11-10 | 2022-03-30 |  | 0d |  |  | 444.64h |
| 181 | 3.8.1 | Write Test Plan (TP) | 2.17d | 2021-11-10 | 2021-11-12 | 148 | 96.07d | 0d | TE379; TE380; TE381; TE382; TE384; TE386; TE1; TE2 | 138.88h |
| 182 | 3.8.2 | **Review TP** | 1.47d | 2021-11-12 | 2021-11-16 |  | 96.07d |  |  | 82.32h |
| 183 | 3.8.2.1 | Preparation for TP | 0.79d | 2021-11-12 | 2021-11-15 | 181 | 96.07d | 0d | TE379; TE380; TE381; TE382; TE384; TE45; TE1 | 44.24h |
| 184 | 3.8.2.2 | Review TP Meeting | 0.32d | 2021-11-15 | 2021-11-16 | 183 | 96.07d | 0d | TE379; TE380; TE381; TE382; TE384; TE386; TE1 | 17.92h |
| 185 | 3.8.2.3 | Rework | 0.36d | 2021-11-16 | 2021-11-16 | 184 | 96.07d |  | TE379; TE380; TE381; TE382; TE384; TE386; TE1 | 20.16h |
| 186 | 3.8.3 | Execute TP (test cases) | 2.25d | 2022-03-24 | 2022-03-28 | 179 | 0d |  | TE379; TE380; TE381; TE382; TE384; TE386; TE1 | 126h |
| 187 | 3.8.4 | Fix Found Defects | 1.04d | 2022-03-28 | 2022-03-29 | 186 | 0d |  | TE379; TE380; TE381; TE382; TE384; TE386; TE1 | 58.24h |
| 188 | 3.8.5 | Test Fixed Defects | 0.7d | 2022-03-29 | 2022-03-30 | 187 | 0d |  | TE379; TE380; TE381; TE382; TE384; TE386; TE1 | 39.2h |
| 189 | 3.9 | **Documentation** | 9.58d | 2021-11-10 | 2021-11-24 |  | 90.13d |  |  | 126.64h |
| 190 | 3.9.1 | User Documentation | 5.75d | 2021-11-10 | 2021-11-18 | 148 | 90.13d | 0d | DE381 | 46h |
| 191 | 3.9.2 | **Review UD** | 3.83d | 2021-11-18 | 2021-11-24 |  | 90.13d |  |  | 80.64h |
| 192 | 3.9.2.1 | Preparation for UD Review | 1d | 2021-11-18 | 2021-11-19 | 190 | 90.13d | 0d | DE379; DE43; DE44; DE1; DE2 | 40h |
| 193 | 3.9.2.2 | Review UD Meeting | 0.45d | 2021-11-19 | 2021-11-19 | 192 | 90.13d | 0d | DE379; DE43; DE44; DE381; DE1; DE2 | 21.6h |
| 194 | 3.9.2.3 | Rework | 2.38d | 2021-11-19 | 2021-11-24 | 193 | 90.13d |  | DE381 | 19.04h |
